# grupo 3 Duracion y precedencias.

Schedule from MS Project, 2025-09-30 to 2025-12-19, costs in $.

## Calendars

- Estándar: Mon-Fri 09:00-13:00, 15:00-19:00; Sat-Sun off.

## Resources

| Resource | Rate | Cost per use |
| --- | --- | --- |
| Desarrollador full stack | 2791820 |  |
| Desarrollador full stack 2 | 2791820 |  |
| Analista Junior | 1677376 |  |
| Arquitecto de SW | 3210827 |  |
| Desarrolador Backend | 2616089 |  |
| DevOps | 3527356 |  |
| Analista Junior 2 | 1677376 |  |
| Servidor en la nube |  |  |
| Disco fisico backups |  | 300000 |

## Schedule

| ID | WBS | Task | Type | Duration | Start | Finish | Predecessors | Total slack | Free slack | Resources | Work | Cost |
| --- | --- | --- | --- | --- | --- | --- | --- | --- | --- | --- | --- | --- |
| 1 | 1 | **Proyecto POS Corralon "M"** |  | 58.73d | 2025-09-30 | 2025-12-19 |  | 0d |  |  | 864.64h | 2,287,841,571.97 |
| 2 | 1.1 | **Inicio** |  | 9.65d | 2025-09-30 | 2025-10-13 |  | 0d |  |  | 176.64h | 390,765,402.64 |
| 3 | 1.1.1 | Entrevistar a los dueños |  | 0.4d | 2025-09-30 | 2025-09-30 |  | 0d |  | Analista Junior | 3.2h | 5,367,603.2 |
| 4 | 1.1.2 | Obtener el libro de ventas |  | 0.18d | 2025-09-30 | 2025-09-30 | 3 | 0.82d | 0d | Analista Junior 2 | 1.44h | 2,415,421.44 |
| 5 | 1.1.3 | Analizar la estructura del libro de ventas |  | 1d | 2025-09-30 | 2025-10-01 | 4 | 0.82d |  | Desarrollador full stack; Analista Junior 2 | 16h | 35,753,568 |
| 6 | 1.1.4 | Realizar el analisis de requerimientos |  | 2d | 2025-09-30 | 2025-10-02 | 3 | 0d |  | Analista Junior; Arquitecto de SW | 32h | 78,211,248 |
| 7 | 1.1.5 | Redactar casos de uso y reglas de negocio |  | 3d | 2025-10-02 | 2025-10-07 | 5, 6 | 0d |  | Analista Junior 2; Arquitecto de SW | 48h | 117,316,872 |
| 8 | 1.1.6 | Definir requerimientos no funcionales. |  | 2d | 2025-10-02 | 2025-10-06 | 5, 6 | 1d |  | Analista Junior | 16h | 26,838,016 |
| 9 | 1.1.7 | Documentar los requerimientos |  | 2d | 2025-10-07 | 2025-10-09 | 7, 8 | 0d |  | Analista Junior 2 | 16h | 26,838,016 |
| 10 | 1.1.8 | Priorizar requisitos |  | 0.5d | 2025-10-09 | 2025-10-09 | 9 | 1.75d |  | Analista Junior; Arquitecto de SW | 8h | 19,552,812 |
| 11 | 1.1.9 | Verificar el documento de requerimientos con el cliente |  | 0.25d | 2025-10-09 | 2025-10-09 | 9 | 0d |  | Analista Junior 2; Arquitecto de SW | 4h | 9,776,406 |
| 12 | 1.1.10 | Estudiar documentacion de la API del sw enlatado |  | 2d | 2025-10-09 | 2025-10-13 | 11 | 0d |  | Analista Junior; Desarrolador Backend | 32h | 68,695,440 |
| 13 | 1.1.12 | Modelo de casos de uso y requerimientos especificos terminado | milestone | 0d | 2025-10-13 | 2025-10-13 | 10, 11, 12 | 0d |  |  |  |  |
| 14 | 1.2 | **Elaboración** |  | 14.33d | 2025-10-13 | 2025-10-31 |  | 0d |  |  | 264h | 761,856,093.33 |
| 15 | 1.2.1 | Analizar caracteristicas, documentacion y diseño del sistema similar |  | 1d | 2025-10-13 | 2025-10-14 | 13 | 0d |  |  |  |  |
| 16 | 1.2.3 | Diseñar modelo conceptual |  | 2d | 2025-10-14 | 2025-10-16 | 15 | 0d |  | Analista Junior; Arquitecto de SW | 32h | 78,211,248 |
| 17 | 1.2.4 | Definir tablas y atributos de la base de datos |  | 1d | 2025-10-16 | 2025-10-17 | 16, 18SS, 19SS, 20SS | 2d |  | Analista Junior 2; Desarrolador Backend | 16h | 34,347,720 |
| 18 | 1.2.5 | Definir el diseño e Informacion de las pantallas |  | 2d | 2025-10-16 | 2025-10-20 | 16 | 1d | 0d | Desarrollador full stack | 16h | 44,669,120 |
| 19 | 1.2.6 | Definir los procesos a realizar |  | 2d | 2025-10-16 | 2025-10-20 | 16 | 1d | 0d | Analista Junior; Arquitecto de SW | 32h | 78,211,248 |
| 20 | 1.2.7 | Definir los flujos de trabajo |  | 3d | 2025-10-16 | 2025-10-21 | 16 | 0d |  | Desarrollador full stack 2 | 24h | 67,003,680 |
| 21 | 1.2.8 | diseñar el prototipo arquitectónico base |  | 3.33d | 2025-10-21 | 2025-10-24 | 17, 18, 19, 20 | 0d |  | Arquitecto de SW; Desarrollador full stack; DevOps | 80h | 254,133,413.33 |
| 22 | 1.2.8 | Evaluar opciones de infraestructura en la nube |  | 1d | 2025-10-24 | 2025-10-27 | 21 | 0d |  | Arquitecto de SW; DevOps | 16h | 53,905,464 |
| 23 | 1.2.9 | Contratar servicio en la nube |  | 1d | 2025-10-27 | 2025-10-28 | 22 | 0d |  | Arquitecto de SW | 8h | 25,686,616 |
| 24 | 1.2.10 | Adquirir disco fisico para backups |  | 1d | 2025-10-28 | 2025-10-29 | 23 | 0d |  | Arquitecto de SW | 8h | 25,686,616 |
| 25 | 1.2.11 | Configurar servidor en la nube |  | 1d | 2025-10-29 | 2025-10-30 | 24 | 0d |  | Desarrollador full stack; DevOps; Servidor en la nube [0.1%] | 16h | 50,553,408 |
| 26 | 1.2.12 | Configurar backups |  | 1d | 2025-10-30 | 2025-10-31 | 25 | 0d |  | Desarrolador Backend; DevOps; Disco fisico backups | 16h | 49,447,560 |
| 27 | 1.2.9 | Modelo de Arquitectura Terminado | milestone | 0d | 2025-10-31 | 2025-10-31 | 26 | 0d |  |  |  |  |

| ID | WBS | Task | Type | Duration | Start | Finish | Predecessors | Total slack | Constraint | Resources | Work | Cost |
| --- | --- | --- | --- | --- | --- | --- | --- | --- | --- | --- | --- | --- |
| 28 | 1.3 | **Construcción** |  | 28d | 2025-10-31 | 2025-12-10 |  | 0d |  |  | 356h | 969,885,580 |
| 29 | 1.3.1 | Desarrollar modulo de informes y consultas |  | 7d | 2025-10-31 | 2025-11-11 | 27 | 0d |  | Desarrolador Backend; Desarrollador full stack | 112h | 302,842,904 |
| 30 | 1.3.2 | Desarrollar servicios de api de facturacion. |  | 2.5d | 2025-11-11 | 2025-11-14 | 29 | 0d |  | Desarrolador Backend | 20h | 52,321,780 |
| 31 | 1.1.11 | Desarrollar el modulo de ventas y pagos |  | 5d | 2025-11-14 | 2025-11-21 | 30 | 0d |  | Desarrolador Backend; Desarrollador full stack | 80h | 216,316,360 |
| 32 | 1.3.3 | Desarrollar el modulo de proveedores y gestion de compras |  | 3d | 2025-11-21 | 2025-11-27 | 31 | 0d |  | Desarrolador Backend; Desarrollador full stack 2 | 48h | 129,789,816 |
| 33 | 1.3.5 | Desarrollar servicios de consumo de api de inventario |  | 2.5d | 2025-11-11 | 2025-11-14 | 30SS | 9d |  | Desarrollador full stack | 20h | 55,836,400 |
| 34 | 1.3.6 | Integrar módulos del sistema |  | 7d | 2025-11-27 | 2025-12-08 | 33, 29, 30, 31, 32 | 0d |  | Desarrollador full stack; Disco fisico backups; Servidor en la nube [0.1%] | 56h | 156,641,920 |
| 35 | 1.3.7 | Testear beta del sistema version beta |  | 2.5d | 2025-12-08 | 2025-12-10 | 34 | 0d |  | Desarrollador full stack; Disco fisico backups | 20h | 56,136,400 |
| 36 | 1.3.4 | Version beta del sistema entregada | milestone | 0d | 2025-12-10 | 2025-12-10 | 35 | 0d | start no earlier than 2025-11-07 |  |  |  |
| 37 | 1.6 | **Transición** |  | 6.75d | 2025-12-10 | 2025-12-19 |  | 0d |  |  | 68h | 165,334,496 |
| 38 | 1.6.1 | confeccionar manual de usuario para uso del software |  | 0.75d | 2025-12-10 | 2025-12-11 | 36 | 0d |  | Analista Junior; Analista Junior 2 | 12h | 20,128,512 |
| 39 | 1.6.2 | Capacitar al personal |  | 1.5d | 2025-12-11 | 2025-12-15 | 38 | 0d |  | Analista Junior | 12h | 20,128,512 |
| 40 | 1.6.3 | Poner en accion el nuevo sistema |  | 1d | 2025-12-15 | 2025-12-16 | 39 | 0d |  | DevOps; Disco fisico backups; Servidor en la nube [0.1%] | 8h | 28,518,848 |
| 41 | 1.6.4 | Realizar pruebas unitarias y de aceptación con casos de uso reales. |  | 1.5d | 2025-12-16 | 2025-12-18 | 40 | 0d |  | DevOps; Disco fisico backups; Servidor en la nube [0.1%] | 12h | 42,628,272 |
| 42 | 1.6.5 | Ajustar los problemas del sistema según el feedback que tenga |  | 1.5d | 2025-12-18 | 2025-12-19 | 41 | 0d |  | Analista Junior; Desarrollador full stack; Disco fisico backups; Servidor en la nube [0.1%] | 24h | 53,930,352 |
| 43 | 1.6.6 | Sistema con ajustes finales entregado | milestone | 0d | 2025-12-19 | 2025-12-19 | 42 | 0d |  |  |  |  |
| 44 | 1.6.7 | sistema terminado e integrado con el sistema anterior | milestone | 0d | 2025-12-19 | 2025-12-19 | 37 | 0d |  |  |  |  |
